# keshav_home_reno

Schedule from MS Project, 2023-07-10 to 2024-07-12, costs in $.

## Calendars

- 10 Academy St., Concord, NH: Mon-Fri 07:00-12:00, 13:00-16:00; Sat-Sun off. Exceptions (off unless hours are given): 2023-09-04 (Labor Day), 2023-10-31 (Halloween), 2023-11-22 to 2023-11-23 (Thanksgiving Holiday), 2023-12-25 (Christmas Holiday), 2024-01-01 (New Year's Day Celebration), 2024-02-14 (Valentine's Day), 2024-05-27 (Memorial Day).

## Resources

| Resource | Unit | Rate | Notes |
| --- | --- | --- | --- |
| GL-1 |  | 20 | general labor |
| GL-2 |  | 25 |  |
| GL-3 |  | 30 |  |
| GL-4 |  | 35 |  |
| C-1 |  | 70 | Carpentor |
| C-2 |  | 80 |  |
| C-3 |  | 90 |  |
| C-4 |  | 100 |  |
| C-5 |  | 110 |  |
| R-1 |  | 60 | Roofer |
| R-2 |  | 70 |  |
| R-3 |  | 80 |  |
| R-4 |  | 90 |  |
| PL-1 |  | 90 | Plumber |
| PL-2 |  | 100 |  |
| PL-3 |  | 110 |  |
| PL-4 |  | 120 |  |
| F-1 |  | 50 | Framer |
| F-2 |  | 60 |  |
| F-3 |  | 70 |  |
| F-4 |  | 80 |  |
| EL-1 |  | 100 | Electrician |
| EL-2 |  | 110 |  |
| EL-3 |  | 120 |  |
| M-1 |  | 60 | Mason |
| M-2 |  | 70 |  |
| M-3 |  | 80 |  |
| PT-1 |  | 50 | Painter |
| PT-2 |  | 60 |  |
| EX-1 |  | 50 | Excavator Operator |
| EX-2 |  | 60 |  |
| DWT |  | 50 | Dry Wall Tapers & Plaster |
| DWT-2 |  | 60 |  |
| II |  | 60 | Insulation Installers |
| LS |  | 45 | Landscapers |
| EE |  | 62.5 | Excavation Equipment |
| WD | window | 750 | Windows |
| D | door | 500 | Interior Doors |
| GD | door | 3000 | Garage Doors |
| C | ton | 90 | Concrete |
| HWF | sq.foot | 18 | Hardwood Flooring |
| TL |  | 5000 | Tile Material |
| CS-1 |  | 150000 | Const. Supplies for House & Porch includes plumbing, and electrical |
| CS-2 |  | 60000 |  |
| LTG |  | 10000 | Lighting |
| CT |  | 7500 | Countertops |
| KC |  | 20000 | Kitchen/Bath Cabinets |
| KBF |  | 15000 | Kitchen/Bath Fixtures |
| Dumpsters |  |  |  |
| DW | sheet | 20 | Dry Wall |
| MB | block | 6.5 | Masonry Blocks |
| R |  | 30000 | Roof(House&Garage) |
| I |  | 10000 | Insulation Material |
| P | gallon | 60 | Paint |
| HVAC |  | 20000 | Heating & Air Cond. |
| KA |  |  | Kitchen Appliances |
| LM |  |  | Landscape Materials |
| TR |  | 50 | Tiler |
| Permits Expense |  |  |  |
| Architect Fee |  |  |  |
| Surveyor Fee |  |  |  |
| Contractor Sign-In Fee |  |  |  |
| Contractor Milestone Fee |  |  |  |
| II-2 |  | 70 |  |

## Schedule

| ID | WBS | Task | Duration | Start | Finish | Predecessors | Total slack | Free slack | Constraint | Resources | Cost |
| --- | --- | --- | --- | --- | --- | --- | --- | --- | --- | --- | --- |
| 1 | 1 | **Inititation-Pre Construction** | 98.88d | 2023-07-10 | 2023-11-29 |  | 0.88d |  |  |  | 20,500 |
| 2 | 1.1 | Contract with Architect for Drawings | 25d | 2023-07-10 | 2023-08-14 |  | 0.88d | 0d |  | Architect Fee [0.1%] | 5,500 |
| 3 | 1.2 | Site Survey for New Addition and Garage | 3d | 2023-08-14 | 2023-08-17 | 2 | 0.88d |  |  | Surveyor Fee [0.1%] | 3,000 |
| 4 | 1.3 | Review and Modify Architectural Plans | 5d | 2023-08-18 | 2023-08-24 | 2, 3 | 0d |  | finish no earlier than 2023-08-24 |  |  |
| 5 | 1.4 | Contractor Selection for Bidding | 30d | 2023-08-25 | 2023-10-06 | 4 | 0d |  |  |  |  |
| 6 | 1.5 | Contract Signing with Selected Contractor | 3d | 2023-10-09 | 2023-10-11 | 5 | 0d |  |  | Contractor Sign-In Fee [0.1%] | 10,000 |
| 7 | 1.6 | Finalized Site Survey Review | 1d | 2023-10-12 | 2023-10-12 | 3, 6 | 0d |  |  |  |  |
| 8 | 1.7 | Submission of Plans and Proposal for Building Permit | 1d | 2023-10-13 | 2023-10-13 | 7 | 0d |  |  |  |  |
| 9 | 1.8 | Building Permit Review and Issuance | 30d | 2023-10-16 | 2023-11-29 | 8 | 0d |  |  | Permits Expense [0.1%] | 2,000 |
| 10 | 1.9 | Application for Construction Loan | 30d | 2023-10-16 | 2023-11-29 | 9SS | 19d |  |  |  |  |
| 11 | 2 | **Develop Project Management Plan** | 50d | 2023-10-16 | 2023-12-28 |  | 0d |  |  |  |  |
| 12 | 2.1 | **Scope Management and Communication Management and Quality** | 4d | 2023-10-16 | 2023-10-19 |  | 0d |  |  |  |  |
| 13 | 2.1.1 | Contractor Reviews Project Overview Statement and Scope | 2d | 2023-10-16 | 2023-10-17 | 9SS | 0d |  |  |  |  |
| 14 | 2.1.2 | Review of Conditions of Satisfaction Statement, Quality Plan, and Communication Setup | 2d | 2023-10-18 | 2023-10-19 | 13 | 0d |  |  |  |  |
| 15 | 2.2 | **Work Breakdown Structure (WBS)** | 5d | 2023-10-20 | 2023-10-26 |  | 0d |  |  |  |  |
| 16 | 2.2.1 | Development of Specific Task List | 3d | 2023-10-20 | 2023-10-24 | 13, 14 | 0d |  |  |  |  |
| 17 | 2.2.2 | Development of Work Breakdown Structure (WBS) | 2d | 2023-10-25 | 2023-10-26 | 16 | 0d |  |  |  |  |
| 18 | 2.3 | **Resources Management** | 15d | 2023-10-27 | 2023-11-17 |  | 0d |  |  |  |  |
| 19 | 2.3.1 | Contractor Performs Skills Assessment | 3d | 2023-10-27 | 2023-11-01 | 16, 17 | 0d |  |  |  |  |
| 20 | 2.3.2 | Contractor Lines Up Sub-Contracting Team | 10d | 2023-11-02 | 2023-11-15 | 19 | 0d |  |  |  |  |
| 21 | 2.3.3 | Contractor Sequences Activities | 2d | 2023-11-16 | 2023-11-17 | 20 | 0d |  |  |  |  |
| 22 | 2.4 | **Schedule Management** | 7d | 2023-11-20 | 2023-11-30 |  | 0d |  |  |  |  |
| 23 | 2.4.1 | Define & Estimate Activity Durations | 2d | 2023-11-20 | 2023-11-21 | 21 | 0d |  |  |  |  |
| 24 | 2.4.2 | Estimate Activity Costs | 5d | 2023-11-24 | 2023-11-30 | 23 | 161.83d |  |  |  |  |
| 25 | 2.4.3 | Develop Schedule | 3d | 2023-11-24 | 2023-11-28 | 23 | 0d |  |  |  |  |
| 26 | 2.4.4 | Review Schedule with Homeowner | 1d | 2023-11-29 | 2023-11-29 | 25 | 0d |  |  |  |  |

| ID | WBS | Task | Duration | Start | Finish | Predecessors | Total slack | Free slack | Resources | Work | Cost |
| --- | --- | --- | --- | --- | --- | --- | --- | --- | --- | --- | --- |
| 27 | 2.5 | **Procurement Plan** | 10d | 2023-11-30 | 2023-12-13 |  | 0d |  |  |  |  |
| 28 | 2.5.1 | Determine Necessary Building Materials | 5d | 2023-11-30 | 2023-12-06 | 26 | 0d |  |  |  |  |
| 29 | 2.5.2 | Sign Contracts with Suppliers/Providers | 5d | 2023-12-07 | 2023-12-13 | 28 | 0d |  |  |  |  |
| 30 | 2.6 | **Cost Management** | 10d | 2023-12-14 | 2023-12-28 |  | 0d |  |  |  |  |
| 31 | 2.6.1 | Compile Estimated Costs of Materials | 10d | 2023-12-14 | 2023-12-28 | 29 | 0d |  |  |  |  |
| 32 | 2.6.2 | Determine Estimated Labor Costs | 5d | 2023-12-14 | 2023-12-20 | 19, 20, 31SS | 0d |  |  |  |  |
| 33 | 2.6.3 | Determine Estimated Project Expense Budget | 3d | 2023-12-21 | 2023-12-26 | 32 | 0d |  |  |  |  |
| 34 | 2.6.4 | Review Contractor Budget with Homeowner | 1d | 2023-12-27 | 2023-12-27 | 33 | 0d |  |  |  |  |
| 35 | 3 | **Execute** | 120.83d | 2023-12-28 | 2024-06-18 |  | 0d |  |  | 4800h | 796,676.67 |
| 36 | 3.1 | **Site Prep and Procurement** | 30d | 2023-12-28 | 2024-02-08 |  | 0d |  |  | 336h | 220,800 |
| 37 | 3.1.1 | Hold Kickoff Meeting and Communicate Schedule | 1d | 2023-12-28 | 2023-12-28 | 10, 34 | 0d |  |  |  |  |
| 38 | 3.1.2 | Demolition of Existing Home | 10d | 2023-12-29 | 2024-01-12 | 37 | 106.5d | 0d | GL-1; GL-2; GL-4 | 240h | 6,400 |
| 39 | 3.1.3 | Dig Basement for New Addition | 2d | 2024-01-15 | 2024-01-16 | 38 | 106.5d | 0d | EE; EX-1; GL-1 | 48h | 2,120 |
| 40 | 3.1.4 | Excavate and Prepare Site for New Garage | 2d | 2024-01-17 | 2024-01-18 | 39 | 106.5d | 0d | EE; EX-2; GL-1 | 48h | 2,280 |
| 41 | 3.1.5 | Order Windows & Doors | 30d | 2023-12-28 | 2024-02-08 | 37SS | 0d |  |  |  |  |
| 42 | 3.1.6 | Order garage and porch supplies | 10d | 2023-12-28 | 2024-01-11 | 37SS | 0d |  | CS-2 |  | 60,000 |
| 43 | 3.1.7 | Order House and Porch Supplies, Plumbing, Electrical lding Supplies | 10d | 2023-12-28 | 2024-01-11 | 37SS | 0d |  | CS-1 |  | 150,000 |
| 44 | 3.1.8 | Order Masonry Blocks | 5d | 2023-12-28 | 2024-01-04 | 37SS | 131.5d | 20d |  |  |  |
| 45 | 3.1.9 | Order Concrete | 2d | 2023-12-28 | 2023-12-29 | 37SS | 141.83d |  |  |  |  |
| 46 | 3.1.10 | Order Dry Wall | 2d | 2023-12-28 | 2023-12-29 | 37SS | 49.33d |  |  |  |  |
| 47 | 3.1.11 | Order Insulation | 2d | 2023-12-28 | 2023-12-29 | 37SS | 46.33d |  |  |  |  |
| 48 | 3.1.12 | Order Bath/Kitchen Fixtures | 10d | 2023-12-28 | 2024-01-11 | 37SS | 133.83d |  |  |  |  |
| 49 | 3.1.13 | Order Tile/ Hardwood Flooring | 30d | 2023-12-28 | 2024-02-08 | 37SS | 55.67d |  |  |  |  |
| 50 | 3.1.14 | Order Lighting | 30d | 2023-12-28 | 2024-02-08 | 37SS | 59.67d |  |  |  |  |
| 51 | 3.1.15 | Order Kitchen Cabinets | 30d | 2023-12-28 | 2024-02-08 | 37SS | 96.83d | 55.67d |  |  |  |
| 52 | 3.1.16 | Order Granite Countertops | 30d | 2023-12-28 | 2024-02-08 | 37SS | 113.83d |  |  |  |  |
| 53 | 3.1.17 | Order HVAC | 20d | 2023-12-28 | 2024-01-25 | 37SS | 123.83d |  |  |  |  |
| 54 | 3.1.18 | Order Garage Doors | 20d | 2023-12-28 | 2024-01-25 | 37SS | 123.83d |  |  |  |  |

| ID | WBS | Task | Type | Duration | Start | Finish | Predecessors | Total slack | Free slack | Resources | Work | Cost |
| --- | --- | --- | --- | --- | --- | --- | --- | --- | --- | --- | --- | --- |
| 55 | 3.2 | **Foundation** |  | 17.33d | 2024-01-19 | 2024-02-13 |  | 106.5d |  |  | 312h | 29,140 |
| 56 | 3.2.1 | Prepare Footings for Garage |  | 3d | 2024-01-19 | 2024-01-23 | 40 | 106.5d | 0d | M-2; M-1 | 48h | 3,120 |
| 57 | 3.2.2 | Prepare Footings for New Addition Foundation |  | 4d | 2024-01-24 | 2024-01-29 | 56 | 106.5d | 0d | M-2; M-1 | 64h | 4,160 |
| 58 | 3.2.3 | Pour Concrete Footings for Garage |  | 1d | 2024-01-30 | 2024-01-30 | 57 | 106.5d | 0d | M-1; C [10 ton] | 8h | 1,380 |
| 59 | 3.2.4 | Pour Concrete Footings for New Addition |  | 2d | 2024-01-31 | 2024-02-01 | 58 | 106.5d | 0d | M-2; M-1 | 32h | 2,080 |
| 60 | 3.2.5 | Build Foundation for Garage |  | 2d | 2024-02-02 | 2024-02-05 | 44, 59 | 106.5d | 0d | M-1; GL-2 | 32h | 1,360 |
| 61 | 3.2.6 | Build Basement Foundation |  | 5.33d | 2024-02-06 | 2024-02-13 | 44, 60 | 106.5d | 0d | M-2; GL-4; M-1 | 128h | 7,040 |
| 62 | 3.2.7 | Hold Milestone Review with Contractor | milestone | 0d | 2024-02-13 | 2024-02-13 | 61 | 106.5d |  | Contractor Milestone Fee |  | 10,000 |
| 63 | 3.3 | **Construction** |  | 106.83d | 2024-01-12 | 2024-06-12 |  | 0d |  |  | 4056h | 537,176.67 |
| 64 | 3.3.1 | Frame Garage |  | 9d | 2024-01-12 | 2024-01-24 | 42 | 0d |  | F-4; F-3 | 144h | 10,800 |
| 65 | 3.3.2 | Frame New Addition and Front Porch |  | 20d | 2024-01-12 | 2024-02-08 | 43, 64SS | 0d |  | F-1; GL-3; F-2 | 480h | 22,400 |
| 66 | 3.3.3 | Put New Roof on Garage |  | 2.67d | 2024-02-09 | 2024-02-13 | 64, 65 | 96.17d | 0d | R-1; R; GL-2; GL-3 | 64h | 32,453.33 |
| 67 | 3.3.4 | Put New Roof on House |  | 5d | 2024-02-13 | 2024-02-21 | 66 | 96.17d | 0d | R-1; R-2; GL-2; GL-3 | 160h | 7,400 |
| 68 | 3.3.5 | Construct Masonry Fireplace |  | 5d | 2024-02-21 | 2024-02-28 | 65, 66, 67 | 96.17d | 0d | MB [500 block]; M-1; M-2 | 80h | 8,450 |
| 69 | 3.3.6 | Milestone Review & Progress Inspection with Bank Examiner | milestone | 0d | 2024-02-28 | 2024-02-28 | 68 | 96.17d |  |  |  |  |
| 70 | 3.3.7 | Install New Windows & Doors in Garage and House |  | 5.33d | 2024-02-09 | 2024-02-19 | 41, 64, 65 | 0d |  | GL-1; D [3 door]; GD [2 door]; WD [18 window]; C-2; C-1 | 128h | 28,253.33 |
| 71 | 3.3.8 | Install Electrical Throughout House & Garage |  | 8.33d | 2024-02-09 | 2024-02-22 | 70SS | 0d |  | EL-1; EL-2; EL-3 | 200h | 22,000 |
| 72 | 3.3.9 | Install Plumbing |  | 7.5d | 2024-02-09 | 2024-02-21 | 71SS | 0.83d |  | PL-1; PL-2; PL-3; PL-4 | 240h | 25,200 |
| 73 | 3.3.10 | Install Heating and Air Conditioning |  | 10d | 2024-02-22 | 2024-03-07 | 71, 72 | 0d |  | HVAC; PL-1; PL-2; PL-3; PL-4 | 320h | 53,600 |
| 74 | 3.3.11 | Install Insulation Throughout House |  | 3d | 2024-03-07 | 2024-03-12 | 47, 71, 72, 73 | 0d |  | I; II; II-2 | 48h | 13,120 |
| 75 | 3.3.12 | Install Dry Wall Throughout the House |  | 6d | 2024-03-12 | 2024-03-20 | 46, 74 | 0d |  | C-1; DW [200 sheet]; C-2; C-3; C-4; C-5 | 240h | 25,600 |
| 76 | 3.3.13 | Tape & Plaster Dry Wall |  | 6d | 2024-03-20 | 2024-03-28 | 75 | 0d |  | DWT; DWT-2 | 96h | 5,280 |
| 77 | 3.3.14 | Order Paint |  | 3d | 2024-03-20 | 2024-03-25 | 76SS | 3d |  |  |  |  |
| 78 | 3.3.15 | Paint Interior Walls and Ceilings |  | 15d | 2024-03-28 | 2024-04-18 | 76, 77 | 0d |  | P [40 gallon]; PT-1; PT-2 | 240h | 15,600 |
| 79 | 3.3.16 | Install New Siding on Outside of House |  | 12d | 2024-03-28 | 2024-04-15 | 78SS | 63.5d | 0d | C-1; C-2; C-3; C-4; C-5 | 480h | 43,200 |
| 80 | 3.3.17 | Milestone Review with Contractor(2), Review Expenses to Budget | milestone | 0d | 2024-04-15 | 2024-04-15 | 79 | 63.5d |  | Contractor Milestone Fee |  | 10,000 |
| 81 | 3.3.18 | Install Bathroom Fixtures |  | 3.33d | 2024-04-18 | 2024-04-23 | 72, 78 | 0d |  | KBF; C-1; C-2; C-3 | 80h | 21,400 |
| 82 | 3.3.19 | Install Kitchen/Bath Cabinets |  | 10d | 2024-04-23 | 2024-05-07 | 51, 81 | 40.17d | 0d | KC; C-4; C-1; C-5 | 240h | 42,400 |
| 83 | 3.3.20 | Build and Install Interior Moldings and Trim Work |  | 7d | 2024-05-07 | 2024-05-16 | 82 | 40.17d |  | C-1; C-4 | 112h | 9,520 |
| 84 | 3.3.21 | Install Kitchen and Bathroom Countertops |  | 4d | 2024-05-07 | 2024-05-13 | 82 | 43.17d |  | CT; C-5 | 32h | 11,020 |
| 85 | 3.3.22 | Install Tile Flooring |  | 4d | 2024-04-23 | 2024-04-29 | 49, 81 | 0d |  | TR; TL; C-3; C-2 | 96h | 12,040 |
| 86 | 3.3.23 | Install Lighting |  | 6.67d | 2024-04-29 | 2024-05-08 | 50, 85 | 0d |  | LTG; EL-1; EL-2; EL-3 | 160h | 27,600 |
| 87 | 3.3.24 | Install Hardwood Flooring |  | 20d | 2024-05-08 | 2024-06-06 | 49, 86 | 0d |  | C-3; C-2; HWF [1800 sq.foot] | 320h | 59,600 |
| 88 | 3.3.25 | Install Kitchen Appliances |  | 2d | 2024-06-06 | 2024-06-10 | 87 | 0d |  | KA [0.1%]; C-3 | 16h | 16,440 |
| 89 | 3.3.26 | Clean Up Worksite |  | 2.5d | 2024-06-10 | 2024-06-12 | 88 | 0d |  | Dumpsters [0.8%]; GL-1; GL-2; GL-3; GL-4 | 80h | 3,800 |
| 90 | 3.3.27 | Milestone Review with Contractor(3) & Progress Review with Bank Examiner | milestone | 0d | 2024-06-12 | 2024-06-12 | 89 | 22d |  | Contractor Milestone Fee |  | 10,000 |

Notes:
- 58: 10 tones of concrete distributed between garage and new addition
- 66: Here the roof is shared for both the garage and house

| ID | WBS | Task | Type | Duration | Start | Finish | Predecessors | Total slack | Resources | Work | Cost |
| --- | --- | --- | --- | --- | --- | --- | --- | --- | --- | --- | --- |
| 91 | 3.4 | **Exterior Landscape** |  | 4d | 2024-06-12 | 2024-06-18 |  | 0d |  | 96h | 9,560 |
| 92 | 3.4.1 | Excavate Lawn and Plant Grass Seed |  | 2d | 2024-06-12 | 2024-06-14 | 89 | 0d | GL-1; EX-1; EE | 48h | 2,120 |
| 93 | 3.4.2 | Plant Outside Landscape |  | 2d | 2024-06-14 | 2024-06-18 | 92 | 0d | LM [3.8%]; LS; GL-1; GL-2 | 48h | 7,440 |
| 94 | 4 | **Project Close Out** |  | 18d | 2024-06-18 | 2024-07-12 |  | 0d |  |  | 10,000 |
| 95 | 4.1 | Village Building Inspector Inspects House & Garage |  | 1d | 2024-06-18 | 2024-06-19 | 93 | 0d |  |  |  |
| 96 | 4.2 | Village Building Inspector Issues a Certificate of Occupancy |  | 1d | 2024-06-19 | 2024-06-20 | 95 | 0d |  |  |  |
| 97 | 4.3 | Conduct Walk Through with Contractor |  | 1d | 2024-06-20 | 2024-06-21 | 96 | 0d |  |  |  |
| 98 | 4.4 | Billing/Accounts for Suppliers and Skilled Labor Finalized |  | 10d | 2024-06-21 | 2024-07-05 | 97 | 0d |  |  |  |
| 99 | 4.5 | Gather All Documents, Invoices, etc. and Archive |  | 4d | 2024-07-05 | 2024-07-11 | 98 | 0d |  |  |  |
| 100 | 4.6 | Milestone Review with Contractor(4) | milestone | 0d | 2024-07-11 | 2024-07-11 | 99 | 0d | Contractor Milestone Fee |  | 10,000 |
| 101 | 4.7 | Celebrate |  | 1d | 2024-07-11 | 2024-07-12 | 100 | 0d |  |  |  |
